# 资产云上线计划

Schedule from a web Gantt chart, 2025-05-20 to 2025-05-20.
Every day is a working day

## Schedule

| ID | WBS | Task | Duration | Start | Finish |
| --- | --- | --- | --- | --- | --- |
| 2 | 1 | **项目准备** | 1d | 2025-05-20 | 2025-05-20 |
| 3 | 1.1 | 项目团队组建 | 1d | 2025-05-20 | 2025-05-20 |
| 4 | 2 | **开发需求沟通** | 1d | 2025-05-20 | 2025-05-20 |
| 5 | 2.1 | **人力云-资产云联动需求** | 1d | 2025-05-20 | 2025-05-20 |
| 6 | 2.1.1 | 现有资产管理系统和人力相关流程梳理 | 1d | 2025-05-20 | 2025-05-20 |
| 7 | 2.1.2 | 资产相关人员信息变动范围确认 | 1d | 2025-05-20 | 2025-05-20 |
